# 软件开发

Schedule from MS Project, 2013-10-16 to 2013-11-27.

## Calendars

- 标准: Mon-Fri 08:00-12:00, 13:00-17:00; Sat-Sun off. Exceptions (off unless hours are given): 2013-10-26 08:00-12:00, 13:00-17:00.

## Resources

| Resource |
| --- |
| 管理人员 |
| 项目经理 |
| 分析人员 |
| 开发人员 |
| 测试人员 |
| 培训人员 |
| 技术联络人员 |
| 部署小组 |
| 朱磊 |
| 冯瑶 |
| 窦国 |

## Schedule

| ID | WBS | Task | Duration | Start | Finish | Predecessors | Total slack | Free slack | Constraint | Deadline | Resources | Work |
| --- | --- | --- | --- | --- | --- | --- | --- | --- | --- | --- | --- | --- |
| 1 | 1 | **系统管理** | 7d? | 2013-10-16 | 2013-10-24 |  | 0d |  |  |  | 朱磊 | 104h |
| 2 | 1.1 | 部门管理 | 1d? | 2013-10-16 | 2013-10-16 |  | 0d |  | start no earlier than 2013-10-16 | 2013-10-16 | 朱磊 | 8h |
| 3 | 1.2 | 员工管理 | 1d? | 2013-10-17 | 2013-10-17 | 2 | 0d |  |  |  | 朱磊 | 8h |
| 4 | 1.3 | 权限管理 | 1d? | 2013-10-18 | 2013-10-18 | 3 | 0d |  |  |  | 朱磊 | 8h |
| 5 | 1.4 | 角色管理 | 1d? | 2013-10-21 | 2013-10-21 | 4 | 0d |  |  |  | 朱磊 | 8h |
| 6 | 1.5 | 菜单管理 | 1d? | 2013-10-22 | 2013-10-22 | 5 | 0d |  |  |  | 朱磊 | 8h |
| 7 | 1.6 | 用户管理 | 1d? | 2013-10-23 | 2013-10-23 | 6 | 0d |  |  |  | 朱磊 | 8h |
| 8 | 1.7 | 缓冲时间 | 1d | 2013-10-24 | 2013-10-24 | 7 | 0d |  |  | 2013-10-24 |  |  |
| 9 | 2 | **会员管理** | 7.5d? | 2013-10-16 | 2013-10-25 |  | 24.5d |  |  |  | 冯瑶 | 112h |
| 10 | 2.1 | 会员列表页面 | 2d? | 2013-10-16 | 2013-10-17 |  | 24.5d | 0d | start no earlier than 2013-10-16 |  | 冯瑶 | 16h |
| 11 | 2.2 | 会员详情页面 | 1d? | 2013-10-18 | 2013-10-18 | 10 | 24.5d | 0d |  |  | 冯瑶 | 8h |
| 12 | 2.3 | 添加会员页面 | 1d? | 2013-10-21 | 2013-10-21 | 11 | 24.5d | 0d |  |  | 冯瑶 | 8h |
| 13 | 2.4 | 会员等级页面 | 1d? | 2013-10-22 | 2013-10-22 | 12 | 24.5d | 0d |  |  | 冯瑶 | 8h |
| 14 | 2.5 | 导出会员功能 | 1d? | 2013-10-23 | 2013-10-23 | 13 | 24.5d | 0d | finish no earlier than 2013-10-22 |  | 冯瑶 | 8h |
| 15 | 2.6 | 密码重置功能 | 0.5d? | 2013-10-24 | 2013-10-24 | 14 | 24.5d | 0d | start no earlier than 2013-10-24 |  | 冯瑶 | 4h |
| 16 | 2.7 | 缓冲时间 | 1d | 2013-10-24 | 2013-10-25 | 15 | 24.5d |  |  |  |  |  |
| 17 | 3 | **商品管理** | 12d? | 2013-10-16 | 2013-10-30 |  | 0d |  |  |  | 窦国 | 192h |
| 18 | 3.1 | 类别管理 | 2d? | 2013-10-16 | 2013-10-17 |  | 8d | 0d | start no earlier than 2013-10-16 | 2013-10-30 | 窦国 | 16h |
| 19 | 3.2 | 品牌管理 | 2d? | 2013-10-18 | 2013-10-21 | 18 | 8d |  | start no earlier than 2013-10-16 | 2013-10-30 | 窦国 | 16h |
| 20 | 3.3 | 图片管理 | 3d? | 2013-10-23 | 2013-10-25 |  | -2d | 0d | start no earlier than 2013-10-23 | 2013-10-30 | 窦国 | 24h |
| 21 | 3.4 | 在售商品管理 | 2d? | 2013-10-24 | 2013-10-25 | 20 | -2d | 0d | finish no later than 2013-10-25 | 2013-10-30 | 窦国 | 16h |
| 22 | 3.5 | 待售商品管理 | 1d? | 2013-10-26 | 2013-10-26 | 21 | 0d |  | finish no later than 2013-10-26 | 2013-10-30 | 窦国 | 8h |
| 23 | 3.6 | 已删除商品管理 | 1d? | 2013-10-28 | 2013-10-28 | 22 | 0d |  | must finish on 2013-10-28 | 2013-10-30 | 窦国 | 8h |
| 24 | 3.7 | 添加新商品 | 1d? | 2013-10-29 | 2013-10-29 | 23 | 0d |  | must finish on 2013-10-29 | 2013-10-30 | 窦国 | 8h |
| 25 | 3.8 | 缓冲时间 | 1d? | 2013-10-30 | 2013-10-30 |  | 0d |  | start no earlier than 2013-10-30 | 2013-10-30 |  |  |

| ID | WBS | Task | Duration | Start | Finish | Predecessors | Total slack | Free slack | Constraint | Resources | Work |
| --- | --- | --- | --- | --- | --- | --- | --- | --- | --- | --- | --- |
| 26 | 4 | **交易管理** | 16d? | 2013-10-25 | 2013-11-14 |  | 9d |  |  | 开发人员 | 304h |
| 27 | 4.1 | 商品评论 | 2d? | 2013-10-31 | 2013-11-01 |  | 15d | 0d | start no earlier than 2013-10-31 | 窦国 | 16h |
| 28 | 4.2 | 商品咨询 | 1d? | 2013-11-04 | 2013-11-04 | 27 | 15d | 0d |  | 窦国 | 8h |
| 29 | 4.3 | 商品晒单 | 2d? | 2013-11-05 | 2013-11-06 | 30, 28 | 15d |  |  | 窦国 | 16h |
| 30 | 4.4 | CPS 管理 | 2d? | 2013-10-26 | 2013-10-28 |  | 20d | 5d | start no earlier than 2013-10-26 | 冯瑶 | 16h |
| 31 | 4.5 | 缓冲时间 | 1d? | 2013-11-07 | 2013-11-07 |  | 14d |  | start no earlier than 2013-11-07 |  |  |
| 32 | 4.6 | **订单管理** | 16d? | 2013-10-25 | 2013-11-14 |  | 9d |  |  |  | 120h |
| 33 | 4.6.1 | 订单管理与跟踪 | 15d? | 2013-10-25 | 2013-11-13 |  | 9d | 0d | start no earlier than 2013-10-25 | 朱磊 | 120h |
| 34 | 4.6.2 | 缓冲时间 | 1d? | 2013-11-14 | 2013-11-14 | 33 | 9d |  |  |  |  |
| 35 | 5 | **促销管理** | 18d? | 2013-10-29 | 2013-11-21 |  | 4d |  |  | 开发人员 | 336h |
| 36 | 5.1 | 满就送 | 4d? | 2013-11-07 | 2013-11-12 | 39 | 5d | 0d |  | 窦国 | 32h |
| 37 | 5.2 | 满件优惠 | 6d? | 2013-11-13 | 2013-11-20 | 36 | 5d |  |  | 朱磊 | 48h |
| 38 | 5.3 | 限时打折 | 4d? | 2013-10-29 | 2013-11-01 |  | 5d | 0d | finish no earlier than 2013-11-01 | 冯瑶 | 32h |
| 39 | 5.4 | 多瓶装 | 3d? | 2013-11-04 | 2013-11-06 | 38 | 5d | 0d |  | 冯瑶 | 24h |
| 40 | 5.5 | 电子券管理 | 7d? | 2013-11-12 | 2013-11-20 |  | 4d | 0d | finish no earlier than 2013-11-20 | 窦国 | 56h |
| 41 | 5.6 | 缓冲时间 | 1d? | 2013-11-21 | 2013-11-21 | 40 | 4d |  |  |  |  |
| 42 | 6 | **配置管理** | 7d? | 2013-11-06 | 2013-11-14 |  | 9d |  |  | 冯瑶 | 104h |
| 43 | 6.1 | 发票相关 | 1d? | 2013-11-06 | 2013-11-06 |  | 9d | 0d | start no earlier than 2013-11-06 | 冯瑶 | 8h |
| 44 | 6.2 | 物流相关 | 1d? | 2013-11-07 | 2013-11-07 | 43 | 9d | 0d | finish no earlier than 2013-11-07 | 冯瑶 | 8h |
| 45 | 6.3 | 支付相关 | 1d? | 2013-11-08 | 2013-11-08 | 44 | 9d | 0d |  | 冯瑶 | 8h |
| 46 | 6.4 | 广告配置 | 3d? | 2013-11-11 | 2013-11-13 | 45 | 9d | 0d |  | 冯瑶 | 24h |
| 47 | 6.5 | 缓冲时间 | 1d? | 2013-11-14 | 2013-11-14 | 46 | 9d |  |  |  |  |
| 48 | 7 | **团购、小酒版、名家鉴赏** | 9d? | 2013-11-15 | 2013-11-27 |  | 0d |  |  | 开发人员 | 128h |
| 49 | 7.1 | 团购模块 | 3d? | 2013-11-15 | 2013-11-19 |  | 1d |  | start no earlier than 2013-11-15 | 冯瑶 | 24h |
| 50 | 7.2 | 小酒版 | 2d? | 2013-11-21 | 2013-11-22 | 49 | 0d |  | finish no earlier than 2013-11-22 | 窦国 | 16h |
| 51 | 7.3 | 名家鉴赏 | 2d? | 2013-11-25 | 2013-11-26 | 50 | 0d |  | finish no earlier than 2013-11-26 | 窦国 | 16h |
| 52 | 7.4 | 缓冲时间 | 1d? | 2013-11-27 | 2013-11-27 | 51 | 0d |  |  |  |  |
